# cronograma_execucao

Schedule from MS Project, 2010-02-15 to 2010-05-03.
Microsoft

## Calendars

- Padrão: Mon-Fri 09:00-12:00, 13:00-18:00; Sat-Sun off. Exceptions (off unless hours are given): 2010-02-12 to 2010-02-17, 2010-02-20 to 2010-02-21 09:00-12:00, 13:00-18:00, 2010-02-27 to 2010-02-28 09:00-12:00, 13:00-18:00, 2010-03-06 to 2010-03-07 09:00-12:00, 13:00-18:00, 2010-03-13 to 2010-03-14 09:00-12:00, 13:00-18:00, 2010-03-20 to 2010-03-21 09:00-12:00, 13:00-18:00, 2010-03-27 to 2010-03-28 09:00-12:00, 13:00-18:00.

## Resources

| Resource |
| --- |
| Janaina |
| Thaiz |
| Janaiba |
| Pedro |
| Melque |
| Renato |
| Paulo Daniel |
| Estêvão |
| Reanto |
| Programador resposável |
| Programador responsável |
| Todos |

## Schedule

| ID | WBS | Task | Type | Duration | Start | Finish | Predecessors | Total slack | Free slack | Resources | Work |
| --- | --- | --- | --- | --- | --- | --- | --- | --- | --- | --- | --- |
| 1 | FDW1 | **Execução FDW** |  | 65d? | 2010-02-15 | 2010-05-03 |  | 0d |  |  | 2120h |
| 2 | FDW1.1 | **Projeto** |  | 65d? | 2010-02-15 | 2010-05-03 |  | 0d |  |  | 1464h |
| 3 | FDW1.1.1 | Preparação do ambiente de desenvolvimento |  | 5d | 2010-02-18 | 2010-02-22 |  | 26d | 0d | Todos | 40h |
| 4 | FDW1.1.2 | Elaboração do plano de teste |  | 10d | 2010-02-18 | 2010-02-27 |  | 40d | 0d | Janaina; Thaiz | 160h |
| 5 | FDW1.1.3 | Escrita dos casos de teste (planilha) |  | 10d | 2010-02-28 | 2010-03-09 | 4 | 40d | 14d | Janaiba; Thaiz | 160h |
| 6 | FDW1.1.4 | Manutenção dos requisitos |  | 65d? | 2010-02-18 | 2010-05-03 |  | 0d |  | Janaina; Thaiz | 1040h |
| 7 | FDW1.1.5 | Modelo Físico de Dados |  | 3d | 2010-02-23 | 2010-02-25 | 3 | 26d | 0d | Pedro; Melque | 48h |
| 8 | FDW1.1.6 | Inspeção do modelo de dados |  | 2d | 2010-02-26 | 2010-02-27 | 7 | 26d | 0d | Estêvão | 16h |
| 9 | FDW1.1.7 | Ambiente preparado para desenvolvimento | milestone | 0d | 2010-02-15 | 2010-02-15 |  | 65d |  |  |  |
| 10 | FDW1.2 | **Codificação** |  | 29d | 2010-02-23 | 2010-03-23 |  | 31d |  |  | 592h |
| 11 | FDW1.2.1 | Instalação do MACA e criação da estrutura de permissões |  | 7d | 2010-02-23 | 2010-03-01 | 3 | 34d | 8d | Melque | 56h |
| 12 | FDW1.2.2 | Elaboração da interface genérica |  | 4d | 2010-02-23 | 2010-02-26 | 3 | 56d |  | Renato | 32h |
| 13 | FDW1.2.3 | Programação da camada de persistência |  | 4d | 2010-02-28 | 2010-03-03 | 8 | 26d | 0d | Pedro; Estêvão; Paulo Daniel | 96h |
| 14 | FDW1.2.4 | Programação da camada de negócios |  | 4d | 2010-03-04 | 2010-03-07 | 13 | 26d | 0d | Paulo Daniel; Estêvão; Pedro | 96h |
| 15 | FDW1.2.5 | Escrita dos testes unitários |  | 2d | 2010-03-08 | 2010-03-09 | 14 | 26d | 0d | Paulo Daniel; Estêvão; Pedro | 48h |
| 16 | FDW1.2.6 | Criação do Adapter para o MACA |  | 3d | 2010-03-10 | 2010-03-12 | 15, 11 | 26d | 0d | Melque; Estêvão | 48h |
| 17 | FDW1.2.7 | Programação da apresentação e do controlador (managed beans) |  | 8d | 2010-03-13 | 2010-03-20 | 16 | 26d | 0d | Renato; Paulo Daniel; Estêvão | 192h |
| 18 | FDW1.2.8 | Inspeção de código |  | 1d | 2010-03-21 | 2010-03-21 | 17 | 26d | 0d | Estêvão | 8h |
| 19 | FDW1.2.9 | Ajustes no código |  | 2d | 2010-03-22 | 2010-03-23 | 18 | 26d | 0d | Programador responsável | 16h |
| 20 | FDW1.2.10 | Versão liberada para testes | milestone | 0d | 2010-03-23 | 2010-03-23 | 19 | 26d | 0d |  |  |
| 21 | FDW1.3 | **Testes** |  | 5d | 2010-03-24 | 2010-03-28 |  | 26d |  |  | 64h |
| 22 | FDW1.3.1 | Execução dos testes funcionais |  | 2d | 2010-03-24 | 2010-03-25 | 20, 5 | 26d | 0d | Janaina; Thaiz | 32h |
| 23 | FDW1.3.2 | Correção |  | 2d | 2010-03-26 | 2010-03-27 | 22 | 26d | 0d | Programador responsável | 16h |
| 24 | FDW1.3.3 | Reteste |  | 1d | 2010-03-28 | 2010-03-28 | 23 | 26d | 0d | Janaina; Thaiz | 16h |
| 25 | FDW1.4 | Versão entregável | milestone | 0d | 2010-03-28 | 2010-03-28 | 24 | 26d |  |  |  |

Notes:
- 13: CardapioDAO / CepDAO / ClienteDAO / EstabelecimentoDAO / FormaPagamentoDAO / PedidoDAO / PratoDAO / ConnFactory / Buffer
- 14: Manter Cliente / Manter CEP / Manter Estabelecimento / Manter Cardápio / Manter Prato / Manter Pedido / Manter Formas de pagamento / Efetuar cadastro / Agendar entrega de pedido / Pesquisar Pedidos / Exibir Estabelecimentos / Exibir Cardápio / Exibir Prato / Solicitar pedido / Registrar avaliação de restaurante / Consultar Pedidos por estabelecimento e período / Consultar Cliente por estabelecimento / Buffer
- 17: frmManterFormaPagamento / frmManterCep / frmManterCliente / frmManterEstabelecimento / frmManterCardapio / frmManterPrato / frmManterPedido / frmEfetuarCadastro / frmExibir (Estabelecimentos, cardápio, prato) / frmSolicitarPedido / frmPesquisarPedidos / frmRelatorioConsultarClientes / frmRelatorioConsultarPedidos
